# PRD2018-G10-甘特图v0.6

Schedule from MS Project, 2018-09-19 to 2019-01-22, 1 hours a day, costs in ¥, A marks actual dates.
HP

## Calendars

- 标准: Mon-Fri 19:00-21:00; Sat-Sun 19:00-22:00. Exceptions (off unless hours are given): 2018-10-01 to 2018-10-07 (十一小长假), 2018-11-03 to 2018-11-04 12:00-18:00 (制作原型), 2018-11-21 17:00-24:00 (重做需求计划), 2018-12-04 (确定业务需求), 2018-12-05 to 2018-12-07 (重做需求计划).

## Resources

| Resource | Rate |
| --- | --- |
| 李俊 | 75 |
| 黄浩峰 | 75 |
| 叶忠杰 | 75 |
| 夏昌灏 | 75 |
| 吴荣欣 | 75 |

## Schedule

| ID | WBS | Task | Type | Duration | Start | Finish | Predecessors | Complete | Remaining | Actual start | Total slack | Resources | Work | Actual work | Cost | Actual cost | 输入 | 输出 | 任务说明 |
| --- | --- | --- | --- | --- | --- | --- | --- | --- | --- | --- | --- | --- | --- | --- | --- | --- | --- | --- | --- |
| 1 | 1 | **软件工程系列课程教学辅助网站** |  | 273d | 2018-09-19 19:00 | 2019-01-22 09:00 |  | 24% | 207.28d | 2018-09-19 08:00 | 0d |  | 547.8h | 87.9h | 41,085 | 6,592.5 |  |  |  |
| 2 | 1.1 | **需求工程项目启动** |  | 18h | 2018-09-19 19:00 | 2018-09-23 09:00 |  | 45% | 9.93h | 2018-09-19 08:00 |  |  | 80.2h | 19.2h | 6,015 | 1,440 |  |  |  |
| 3 | 1.1.1 | 人员召集 | manual | 1h | 2018-09-19 08:00 A | 2018-09-19 09:00 |  |  | 1h |  |  | 李俊; 黄浩峰; 叶忠杰; 夏昌灏; 吴荣欣 | 5h |  | 375 |  | G10小组 | 人员名单 | 课上黄浩峰、李俊与叶忠杰、夏昌灏、吴荣欣各自缺人，讨论合并为一组 |
| 4 | 1.1.2 | 确定小组名单 | manual | 1h | 2018-09-19 08:00 A | 2018-09-19 09:00 | 3 |  | 1h |  |  | 李俊; 黄浩峰; 叶忠杰; 夏昌灏; 吴荣欣 | 5h |  | 375 |  | 人员名单 | 小组名单 | 本组成员为：李俊、黄浩峰、夏昌灏、叶忠杰、吴荣欣 |
| 5 | 1.1.3 | 启动会议 | manual | 1h | 2018-09-22 08:00 | 2018-09-22 09:00 | 4 |  |  |  |  | 黄浩峰; 李俊; 吴荣欣; 夏昌灏; 叶忠杰 | 5h |  | 375 |  | 全组成员参会 | 项目正式启动 | 项目正式启动 |
| 6 | 1.1.4 | 课题选定 | manual | 4h | 2018-09-23 08:00 A | 2018-09-23 12:00 | 5 | 25% | 3h |  |  | 李俊; 黄浩峰; 叶忠杰; 吴荣欣; 夏昌灏 | 16h | 1h | 1,200 | 75 | 全组讨论 | 常规选题 | 杨老师给定了案例教学系统、渔乐生活APP、软件工程系列课程教学辅助网站，我们组根据自己的实际，选择了常规选题 |
| 7 | 1.1.5 | **软件环境配置** |  | 22h | 2018-10-01 08:00 A | 2018-10-03 09:00 |  | 50% | 11h |  |  |  | 30h | 15h | 2,250 | 1,125 | 项目所需的各个软件 | 满足项目需要的环境 | 各组员按照杨老师上课提到的软件进行本地安装和部署 |
| 8 | 1.1.5.1 | OFFICE软件安装 | manual | 2h | 2018-10-01 08:00 A | 2018-10-01 10:00 | 6 | 50% | 1h |  |  | 黄浩峰; 李俊; 吴荣欣; 夏昌灏; 叶忠杰 | 10h | 5h | 750 | 375 | office2010下载 | office2010各组员电脑安装 | 方便制作各种文档 |
| 9 | 1.1.5.2 | 原型制作工具安装 | manual | 2h | 2018-10-02 08:00 A | 2018-10-02 10:00 | 6 | 50% | 1h |  |  | 黄浩峰; 李俊; 吴荣欣; 夏昌灏; 叶忠杰 | 10h | 5h | 750 | 375 | 原型制作工具下载 | 各组员电脑上安装 | 原本打算使用墨刀，但鉴于价格因素，以RP为备选 |
| 10 | 1.1.5.3 | 配置管理工具安装 | manual | 2h | 2018-10-03 08:00 A | 2018-10-03 10:00 | 6 | 50% | 1h |  |  | 黄浩峰; 李俊; 吴荣欣; 夏昌灏; 叶忠杰 | 10h | 5h | 750 | 375 | git及github下载 | 各组员电脑安装 | 使用git进行版本控制 |
| 11 | 1.1.6 | **知识准备** |  | 197h | 2018-10-12 08:00 A | 2018-12-27 09:00 |  | 56% | 86.19h |  |  |  | 19.2h | 3.2h | 1,440 | 240 |  |  |  |
| 12 | 1.1.6.1 | 翻转：UML概述 | manual | 2h | 2018-10-12 08:00 A | 2018-10-12 10:00 A | 8 | 100% |  |  |  | 李俊 | 1h | 1h | 75 | 75 | UML概述知识 | UML概述PPT | 学习UML概述方面的知识 |
| 13 | 1.1.6.2 | 翻转：UML工具 | manual | 2h | 2018-10-20 19:00 A | 2018-10-21 02:00 A | 12 | 100% |  |  |  | 叶忠杰 | 1h | 1h | 75 | 75 | UML工具相关知识 | UML工具PPT | 就UML制作工具相关知识进行学习 |
| 14 | 1.1.6.3 | 翻转：UML基础I | manual | 2h | 2018-10-28 08:00 A | 2018-10-28 10:00 A | 13 | 100% |  |  |  | 黄浩峰 |  |  |  |  | UML基础I知识 | UML基础I-PPT | UML基础I学习 |
| 15 | 1.1.6.4 | 翻转：UML界面原型 | manual | 5h | 2018-11-02 08:00 A | 2018-11-02 13:00 | 14 | 60% | 2h |  |  | 叶忠杰; 夏昌灏; 吴荣欣 | 7.2h | 1.2h | 540 | 90 | 学习界面原型相关 | UML界面原型PPT，以及初步的界面原型 | 因为理解错了任务要求，做出了初步的界面原型 |
| 16 | 1.1.6.5 | 翻转：UML基础III | manual | 3h | 2018-12-20 08:00 | 2018-12-20 11:00 | 15 |  |  |  |  | 吴荣欣; 李俊 | 6h |  | 450 |  | UML基础III知识 | UML基础III PPT | UML基础III知识学习 |
| 17 | 1.1.6.6 | 翻转：UML基础IV | manual | 2h | 2018-12-27 08:00 | 2018-12-27 10:00 | 16 |  |  |  |  | 黄浩峰; 李俊 | 4h |  | 300 |  | UML基础IV 知识 | UML基础IV PPT | UML基础IV学习 |
| 18 | 1.2 | **需求工程项目计划** |  | 173h | 2018-09-26 08:00 | 2018-12-07 09:00 |  | 43% | 98.41h | 2018-09-29 08:00 |  |  | 178.8h | 49.3h | 13,410 | 3,697.5 |  |  |  |
| 19 | 1.2.1 | **软件需求工程项目计划** |  | 22h | 2018-10-06 08:00 A | 2018-10-07 09:00 | 6 | 52% | 10.66h |  |  | 李俊; 黄浩峰; 吴荣欣; 叶忠杰; 夏昌灏 | 45h | 20.4h | 3,375 | 1,530 | 软件需求工程项目计划模板 | 软件需求工程项目计划V0.1 | 本组编写的第一个版本需求计划，参照的是学长模板 |
| 20 | 1.2.1.1 | 范围管理计划 | manual | 3h | 2018-10-06 08:00 A | 2018-10-06 11:00 | 6 | 67% | 1h |  |  | 黄浩峰 | 3h | 2h | 225 | 150 | 选题说明 | 范围管理文档 | 制作范围管理文档 |
| 21 | 1.2.1.2 | 风险管理计划 | manual | 3h | 2018-10-06 08:00 A | 2018-10-06 11:00 | 6 | 67% | 1h |  |  | 夏昌灏 | 3h | 2h | 225 | 150 | 风险管理计划模板 | 风险管理计划 | 制作风险管理计划 |
| 22 | 1.2.1.3 | 成本管理计划 | manual | 3h | 2018-10-06 08:00 A | 2018-10-06 11:00 | 6 | 33% | 2h |  |  | 李俊 | 2h |  | 150 |  | 成本管理计划模板 | 成本管理计划 | 制作成本管理计划 |
| 23 | 1.2.1.4 | 沟通管理计划 | manual | 3h | 2018-10-07 08:00 A | 2018-10-07 11:00 | 6 | 67% | 1h |  |  | 李俊 | 3h | 2h | 225 | 150 | 沟通管理计划模板 | 沟通管理计划 | 制作沟通管理计划 |
| 24 | 1.2.1.5 | 配置管理计划 | manual | 3h | 2018-10-07 08:00 A | 2018-10-07 11:00 | 6 | 67% | 1h |  |  | 夏昌灏 | 3h | 2h | 225 | 150 | 组内讨论如何进行配置管理 | 配置管理流程图 | 决定配置管理流程 |
| 25 | 1.2.1.6 | 进度管理计划 | manual | 3h | 2018-10-07 08:00 A | 2018-10-07 11:00 | 6, 29 | 67% | 1h |  |  | 李俊 | 3h | 2h | 225 | 150 | 进度管理计划模板 | 进度管理计划 | 制作进度管理计划 |
| 26 | 1.2.1.7 | 人力资源管理计划 | manual | 3h | 2018-09-23 19:00 | 2018-09-23 22:00 | 6 |  |  |  |  | 吴荣欣 | 3h |  | 225 |  | 人力资源管理计划模板 | 人力资源管理计划 | 制作人力资源管理计划 |
| 27 | 1.2.1.8 | 质量管理计划 | manual | 3h | 2018-10-07 08:00 A | 2018-10-07 11:00 | 6 | 80% | 0.6h |  |  | 李俊 | 3h | 2.4h | 225 | 180 | 质量管理计划模板 | 质量管理计划 | 保证需求工程的质量 |
| 28 | 1.2.1.9 | 合并文档 | manual | 2h | 2018-10-08 19:00 | 2018-10-08 21:00 | 20, 21, 22, 23, 24, 25, 26, 27 |  |  |  |  | 李俊 | 2h |  | 150 |  | 各个子计划 | 软件需求工程项目计划 | 整合各个字计划 |
| 29 | 1.2.2 | 甘特图初版 | manual | 3h | 2018-09-29 08:00 A | 2018-09-29 21:00 | 6 | 50% | 1.5h |  |  | 李俊 | 3h | 1.5h | 225 | 112.5 | 需求工程流程 | 初步的甘特图 | 制作出初步的甘特图 |
| 30 | 1.2.3 | WBS | manual | 2h | 2018-10-20 08:00 A | 2018-10-20 10:00 | 29 | 50% | 1h |  |  | 吴荣欣 | 1h |  | 75 |  | 甘特图分工 | 初步的WBS | 制作WBS |
| 31 | 1.2.4 | OBS | manual | 2h | 2018-10-21 08:00 A | 2018-10-21 10:00 | 19 | 40% | 1.2h |  |  | 夏昌灏; 叶忠杰 | 3.2h | 0.8h | 240 | 60 | 人员的分工 | 初步的OBS图 | 制作OBS图 |

| ID | WBS | Task | Type | Duration | Start | Finish | Predecessors | Complete | Remaining | Actual start | Total slack | Resources | Work | Actual work | Cost | Actual cost | 输入 | 输出 | 任务说明 |
| --- | --- | --- | --- | --- | --- | --- | --- | --- | --- | --- | --- | --- | --- | --- | --- | --- | --- | --- | --- |
| 32 | 1.2.5 | **可行性分析** |  | 141d | 2018-10-08 19:00 | 2018-12-05 12:00 | 19 | 45% | 77.55d | 2018-10-13 08:00 | 0d |  | 97.6h | 17.4h | 7,320 | 1,305 |  |  |  |
| 33 | 1.2.5.1 | **可行性分析初稿** |  | 22h | 2018-10-13 08:00 A | 2018-10-14 08:00 |  | 38% | 13.75h |  |  | 夏昌灏; 叶忠杰; 黄浩峰; 吴荣欣 | 92h | 15h | 6,900 | 1,125 | 需求工程项目计划 | 初步的可行性分析报告 | 第一次制作可行性分析报告 |
| 34 | 1.2.5.1.1 | 经济可行性分析 | manual | 2h | 2018-10-13 08:00 A | 2018-10-13 10:00 | 19 | 50% | 1h |  |  | 黄浩峰 | 2h | 1h | 150 | 75 | 经济可行性分析模板 | 经济可行性分析部分 | 制作经济可行性 |
| 35 | 1.2.5.1.2 | 法律可行性分析 | manual | 2h | 2018-10-08 19:00 | 2018-10-08 21:00 | 19 |  |  |  |  | 吴荣欣 | 2h |  | 150 |  | 法律可行性分析模板 | 法律可行性分析部分 | 制作法律可行性分析 |
| 36 | 1.2.5.1.3 | 技术可行性分析 | manual | 2h | 2018-10-13 08:00 A | 2018-10-13 10:00 | 19 | 50% | 1h |  |  | 夏昌灏 | 2h | 1h | 150 | 75 | 技术可行性分析模板 | 技术可行性分析部分 | 制作技术可行性分析 |
| 37 | 1.2.5.1.4 | 操作可行性分析 | manual | 2h | 2018-10-13 08:00 A | 2018-10-13 10:00 | 19 | 50% | 1h |  |  | 李俊 | 2h | 1h | 150 | 75 | 操作可行性分析模板 | 操作可行性分析部分 | 制作操作可行性分析 |
| 38 | 1.2.5.2 | 可行性分析重做 | manual | 4h | 2018-12-05 08:00 A | 2018-12-05 12:00 | 34, 35, 36, 37, 19 | 60% | 1.6h |  |  | 叶忠杰; 吴荣欣 | 5.6h | 2.4h | 420 | 180 | 可行性分析初稿 | 重做的可行性分析 | 因为课上评审，可行性分析很糟糕，得重做 |
| 39 | 1.2.6 | 编写项目章程 | milestone, manual | 3h | 2018-10-19 08:00 A | 2018-12-08 20:24 | 32 | 53% | 1.4h |  |  | 李俊 | 3h | 1.6h | 225 | 120 | 授权和整个项目的安排 | 项目章程 | 由项目下达者授权李俊为项目经理，全权负责本次项目 |
| 40 | 1.2.7 | 需求计划第一次正式评审 | manual | 1h | 2018-10-08 19:00 | 2018-10-08 20:00 | 19 |  |  |  |  | 黄浩峰; 李俊; 吴荣欣; 夏昌灏; 叶忠杰 | 5h |  | 375 |  | 杨枨老师和众组长的修改意见 | 修改的需求计划 | 因为整个需求计划漏洞太多，所以申请重评 |
| 41 | 1.2.8 | **需求计划第二次正式评审** |  | 1h | 2018-12-05 08:00 A | 2018-12-05 09:00 | 40 | 16% | 0.84h |  |  | 黄浩峰; 李俊; 吴荣欣; 叶忠杰; 夏昌灏 | 15h | 6.6h | 1,125 | 495 | 杨枨老师的修改计划 | 正式的需求计划 | 在课上进行第二次评审，但因为做的还是太差，继续修改 |
| 42 | 1.2.8.1 | 范围管理计划修改 | manual | 2h | 2018-12-08 08:00 | 2018-12-08 10:00 | 20 |  |  |  |  | 黄浩峰 | 2h |  | 150 |  | 范围管理计划 | 修改后的范围管理计划 | 根据PMBOK来修改范围管理计划 |
| 43 | 1.2.8.2 | 进度管理计划修改25 | manual | 3h | 2018-12-07 08:00 | 2018-12-07 11:00 | 25 |  |  |  |  | 李俊 | 3h |  | 225 |  | 进度管理计划 | 修改后的进度管理计划 | 根据PMBOK修改进度管理计划 |
| 44 | 1.2.8.3 | 配置管理计划修改 | manual | 2h | 2018-12-05 08:00 A | 2018-12-05 10:00 | 24 | 80% | 0.4h |  |  | 夏昌灏 | 2h | 1.6h | 150 | 120 | 配置管理计划 | 修改后的配置管理计划 | 根据PMBOK的要求修改配置管理计划 |
| 45 | 1.2.8.4 | 风险管理计划修改 | manual | 1h | 2018-12-06 08:00 | 2018-12-06 09:00 | 21 |  |  |  |  | 夏昌灏 | 1h |  | 75 |  | 风险管理计划 | 修改后的风险管理计划 | 根据PMBOK来修改风险管理计划 |
| 46 | 1.2.8.5 | 成本管理计划 | manual | 2h | 2018-12-05 08:00 | 2018-12-05 10:00 | 22 |  |  |  |  | 吴荣欣 | 2h |  | 150 |  | 成本管理计划 | 修改后的成本管理计划 | 根据PMBOK修改成本管理计划 |
| 47 | 1.2.9 | 项目经理变更 | manual | 1h | 2018-12-05 08:00 | 2018-12-05 09:00 | 39, 41 |  |  |  |  | 黄浩峰; 李俊; 吴荣欣; 夏昌灏; 叶忠杰 | 5h |  | 375 |  | 项目经理变更会议 | 全组同意变更 | 因为前项目经理工作不够上心，自觉提出变更请求，并通知并询问了两位老师，并提交了会议录音和会议报告以及邮件 |
| 48 | 1.2.10 | 正式发布软件需求工程项目计划 | milestone, manual | 1h | 2018-12-07 08:00 A | 2018-12-07 09:00 A | 41 | 100% |  |  |  | 李俊; 夏昌灏; 黄浩峰; 叶忠杰; 吴荣欣 | 1h | 1h | 75 | 75 | 初步的需求项目计划工程 | 软件需求项目工程计划 | 通过第三次评审，发布需求工程计划 |
| 49 | 1.3 | **需求工程执行过程** |  | 150h | 2018-11-23 08:00 | 2019-01-22 09:00 |  | 4% | 143.82h | 2018-11-30 08:00 |  |  | 195.5h | 6.1h | 14,662.5 | 457.5 |  |  |  |
| 50 | 1.3.1 | **需求开发过程** |  | 84h | 2018-11-30 08:00 | 2018-12-31 09:00 |  | 6% | 79.25h | 2018-12-04 08:00 |  |  | 137.5h | 6.1h | 10,312.5 | 457.5 |  |  |  |
| 51 | 1.3.1.1 | **需求获取** |  | 32h | 2018-12-04 08:00 A | 2018-12-12 09:00 |  | 15% | 27.23h |  |  |  | 39.5h | 6.1h | 2,962.5 | 457.5 |  |  |  |
| 52 | 1.3.1.1.1 | 与杨枨老师进行访谈 | manual | 0.5h | 2018-12-04 08:00 A | 2018-12-04 08:30 A | 40 | 100% |  |  |  | 黄浩峰; 李俊; 吴荣欣; 夏昌灏; 叶忠杰 | 2.5h | 2.5h | 187.5 | 187.5 | 全组访谈 | 访谈录音及业务需求 | 获取业务需求 |
| 53 | 1.3.1.1.2 | 上下文图 | manual | 1h | 2018-12-05 08:00 A | 2018-12-05 09:00 | 52 | 50% | 0.5h |  |  | 黄浩峰 | 1h | 0.5h | 75 | 37.5 | 软件需求课本 | 上下文图 | 可以更好地说明愿景和范围文档 |
| 54 | 1.3.1.1.3 | 关联图 | manual | 1h | 2018-12-06 08:00 A | 2018-12-06 09:00 | 52 | 50% | 0.5h |  |  | 黄浩峰 | 1h | 0.5h | 75 | 37.5 | 软件需求课本 | 关联图 | 根据杨枨老师课上提的要求，愿景文档需要绘制关联图 |
| 55 | 1.3.1.1.4 | 编写项目愿景与范围文档 | manual | 5h | 2018-12-08 19:00 A | 2018-12-09 21:00 | 52, 48, 54, 53 | 32% | 3.4h |  |  | 黄浩峰 | 5h | 1.6h | 375 | 120 | 杨枨老师给与关于需求的意见 | 愿景与范围文档 | 编写愿景文档 |
| 56 | 1.3.1.1.5 | 确定需求开发过程 | manual | 2h | 2018-12-09 19:00 | 2018-12-09 21:00 | 55 |  |  |  |  | 吴荣欣; 夏昌灏 | 4h |  | 300 |  | 产品愿景和范围 | 确定开发过程 | 确定需求开发过程 |
| 57 | 1.3.1.1.6 | 用例图 | manual | 3h | 2018-12-08 08:00 | 2018-12-08 11:00 | 55 |  |  |  |  | 吴荣欣; 叶忠杰 | 6h |  | 450 |  | 使用实例 | 用例图 | 制作用例图 |
| 58 | 1.3.1.1.7 | 愿景与范围文档补充 | manual | 3h | 2018-12-09 08:00 A | 2018-12-09 11:00 | 55 | 33% | 2h |  |  | 黄浩峰 | 3h | 1h | 225 | 75 | 初版的项目愿景与范围文档 | 修改后的项目愿景与范围文档 | 补充上下文图与关联图 |
| 59 | 1.3.1.1.8 | 用户群分类 | manual | 2h | 2018-12-09 21:00 | 2018-12-10 20:00 | 55 |  |  |  |  | 李俊; 夏昌灏 | 4h |  | 300 |  | 选题说明 | 用户分类文档 | 对用户进行判断 |
| 60 | 1.3.1.1.9 | 建立核心队伍 | manual | 2h | 2018-12-09 20:00 | 2018-12-09 22:00 | 59 |  |  |  |  | 李俊 | 2h |  | 150 |  | 小组名单 | 核心队伍人员责任表 | 建立核心队伍以更好的完成项目 |
| 61 | 1.3.1.1.10 | 用户访谈 | manual | 1d | 2018-12-10 20:00 | 2018-12-10 21:00 | 59 |  |  |  |  | 叶忠杰 | 1h |  | 75 |  | 用户类别 | 用户访谈记录 | 针对不同的用户进行访谈 |
| 62 | 1.3.1.1.11 | 分析用户工作流程 | manual | 4h | 2018-12-09 20:00 | 2018-12-10 21:00 | 59 |  |  |  |  | 李俊 | 4h |  | 300 |  | 用户代表使用过程 | 业务流程图 | 对用户工作的流程进行剖析 |
| 63 | 1.3.1.1.12 | 用户问卷调查 | manual | 1h | 2018-12-09 08:00 | 2018-12-09 09:00 |  |  |  |  |  | 叶忠杰; 李俊 | 2h |  | 150 |  | 问题 | 用户调查报告 | 更好地了解用户 |
| 64 | 1.3.1.1.13 | 分析调查结果 | manual | 2h | 2018-12-09 19:00 | 2018-12-09 21:00 | 63 |  |  |  |  | 李俊; 吴荣欣 | 4h |  | 300 |  | 调查报告 | 分析结果 | 对收集到的问卷信息进行调查 |

| ID | WBS | Task | Type | Duration | Start | Finish | Predecessors | Resources | Work | Cost | 输入 | 输出 | 任务说明 |
| --- | --- | --- | --- | --- | --- | --- | --- | --- | --- | --- | --- | --- | --- |
| 65 | 1.3.1.2 | **需求分析** |  | 48h | 2018-12-14 08:00 | 2018-12-26 09:00 |  |  | 29h | 2,175 |  |  |  |
| 66 | 1.3.1.2.1 | 分析可实现性 | manual | 2h | 2018-12-14 19:00 | 2018-12-14 21:00 | 70 | 黄浩峰; 叶忠杰 | 4h | 300 | 需求工程项目计划 | 需求可行性分析文档 | 通过原型进行分析可实现性 |
| 67 | 1.3.1.2.2 | 确定需求优先级 | manual | 1h | 2018-12-17 08:00 | 2018-12-17 09:00 | 66 | 夏昌灏 | 1h | 75 | 获取的需求 | 需求优先级文档 | 根据不同用户提的需求，进行优先级排序 |
| 68 | 1.3.1.2.3 | 为需求建立模型 | manual | 4h | 2018-12-17 19:00 | 2018-12-18 21:00 | 67 | 黄浩峰; 李俊 | 8h | 600 | 获取的需求 | 初步的需求模型 | 建立需求模型以更好的分析 |
| 69 | 1.3.1.2.4 | 编写数据字典 | manual | 4h | 2018-12-09 19:00 | 2018-12-10 20:00 | 58 | 黄浩峰; 吴荣欣 | 8h | 600 | 提取的需求 | 数据字典 | 编写数据字典 |
| 70 | 1.3.1.2.5 | 界面原型绘制 | manual | 4h | 2018-12-11 19:00 | 2018-12-12 21:00 | 62 | 李俊; 叶忠杰 | 8h | 600 | 初步的界面原型 | 界面原型 | 在上次错误做出界面原型的基础上修改制作出原型 |
| 71 | 1.3.1.3 | **需求规范说明** |  | 24h | 2018-12-19 08:00 | 2018-12-21 09:00 | 65 |  | 57h | 4,275 |  |  |  |
| 72 | 1.3.1.3.1 | 采用软件需求规格模板 | manual | 3h | 2018-12-19 08:00 | 2018-12-19 11:00 | 69 | 夏昌灏; 叶忠杰 | 6h | 450 | 需求工程项目计划 | 需求规格模板 | 制作软件需求规格模板 |
| 73 | 1.3.1.3.2 | 指明需求来源 | manual | 2h | 2018-12-19 08:00 | 2018-12-19 10:00 | 72 | 李俊; 黄浩峰 | 4h | 300 | 提取的需求 | 来源 | 对需求来源分析 |
| 74 | 1.3.1.3.3 | 为每一项需求注上标号 | manual | 3h | 2018-12-19 08:00 | 2018-12-19 11:00 | 73 | 叶忠杰; 李俊 | 6h | 450 | 指明来源的需求 | 标识好的需求 | 标识需求 |
| 75 | 1.3.1.3.4 | 记录业务规范 | manual | 3h | 2018-12-20 08:00 | 2018-12-20 11:00 | 74 | 黄浩峰; 吴荣欣 | 6h | 450 | 业务规范 | 标准 | 业务规范化 |
| 76 | 1.3.1.3.5 | 记录非功能需求 | manual | 2h | 2018-12-09 21:00 | 2018-12-10 20:00 | 63, 64 | 李俊 | 2h | 150 | 调查结果 | 非功能需求 | 挑出非功能需求 |
| 77 | 1.3.1.3.6 | 创建需求跟踪能力矩阵 | manual | 4h | 2018-12-21 08:00 | 2018-12-21 12:00 | 75 | 吴荣欣; 李俊 | 8h | 600 | 需求来源，需求规格模板 | 需求跟踪能力矩阵 | 跟踪需求 |
| 78 | 1.3.1.3.7 | 编写软件需求规格说明书 | milestone, manual | 5h | 2018-12-20 19:00 | 2018-12-22 20:00 | 75, 68 | 黄浩峰; 李俊; 吴荣欣; 夏昌灏; 叶忠杰 | 25h | 1,875 | 需求规格模板 | 初步的SRS文档 | 编写初版的SRS文档 |
| 79 | 1.3.1.4 | **需求验证** |  | 33h | 2018-12-24 08:00 | 2018-12-30 09:00 | 71 |  | 12h | 900 |  |  |  |
| 80 | 1.3.1.4.1 | 审查需求文档 | manual | 2h | 2018-12-24 08:00 | 2018-12-24 10:00 | 78 | 夏昌灏 | 2h | 150 | 初步的SRS文档 | SRS文档模板 | 对需求文档进行审查 |
| 81 | 1.3.1.4.2 | 编写测试用例 | manual | 2h | 2018-12-29 08:00 | 2018-12-29 10:00 | 78 | 吴荣欣; 黄浩峰 | 4h | 300 | 用例图 | 测试用例 | 编写测试用例 |
| 82 | 1.3.1.4.3 | 编写用户手册 | manual | 2h | 2018-12-29 08:00 | 2018-12-29 10:00 | 78 | 夏昌灏; 叶忠杰 | 4h | 300 | 用户群体 | 用户手册 | 针对用户编写用户手册 |
| 83 | 1.3.1.4.4 | 确定合格的标准 | manual | 2h | 2018-12-21 19:00 | 2018-12-21 21:00 | 78 | 夏昌灏 | 2h | 150 | SRS文档模板 | 需求规格说明标准 | 验收标准确定 |
| 84 | 1.3.2 | **需求管理过程** |  | 45h | 2019-01-07 08:00 | 2019-01-18 10:00 |  |  | 58h | 4,350 |  |  |  |
| 85 | 1.3.2.1 | 进行变更影响分析 | manual | 2h | 2018-12-22 19:00 | 2018-12-22 21:00 | 83 | 夏昌灏 | 2h | 150 | 需求规格说明书 | 需求影响分析 | 变更需求分析 |
| 86 | 1.3.2.2 | 建立基线并控制需求集和版本 | manual | 3h | 2018-12-22 21:00 | 2018-12-23 02:00 | 85 | 叶忠杰; 黄浩峰 | 6h | 450 | 需求规格书 | 基线 | 建立需求基线 |
| 87 | 1.3.2.3 | 确定变更控制过程 | manual | 3h | 2018-12-23 19:00 | 2018-12-23 22:00 | 85 | 夏昌灏; 吴荣欣 | 6h | 450 | 变更控制过程 | 需求变更文档初版 | 确定变更控制 |
| 88 | 1.3.2.4 | 建立变更控制委员会 | manual | 3h | 2018-12-24 19:00 | 2018-12-25 20:00 | 87 | 叶忠杰; 李俊 | 6h | 450 | 变更控制委员 | 变更控制委员会 | 需要专门人员来进行变更控制 |
| 89 | 1.3.2.5 | 跟踪每一项变更 | manual | 3h | 2018-12-25 19:00 | 2018-12-26 20:00 | 88 | 黄浩峰 | 3h | 225 | 需求变更控制文档初版 | 需求变更文档第二版 | 跟踪变更 |
| 90 | 1.3.2.6 | 维护变更历史记录 | manual | 3h | 2018-12-23 19:00 | 2018-12-23 22:00 | 85 | 叶忠杰; 吴荣欣 | 6h | 450 | 需求变更文档第二版 | 需求变更文档 | 记录变更历史 |
| 91 | 1.3.2.7 | 衡量需求稳定性 | manual | 3h | 2018-12-23 20:00 | 2018-12-24 20:00 | 90 | 李俊; 夏昌灏 | 6h | 450 | 需求文档的控制版本和基准版本 | 需求稳定性文档 | 对需求稳定性的衡量 |
| 92 | 1.3.2.8 | 使用需求管理工具 | manual | 3h | 2019-01-14 19:00 | 2019-01-15 20:00 | 91 | 夏昌灏 | 3h | 225 | 变更需求 | 使用需求管理工具 | 使用工具来管理需求 |
| 93 | 1.3.2.9 | 发布需求变更文档 | milestone, manual | 4h | 2019-01-15 19:00 | 2019-01-16 21:00 | 92, 89 | 李俊; 黄浩峰; 吴荣欣; 夏昌灏; 叶忠杰 | 20h | 1,500 | 需要变更的需求 | 需求变更文档 | 需求变更文档的完成 |

| ID | WBS | Task | Type | Duration | Start | Finish | Predecessors | Complete | Remaining | Resources | Work | Actual work | Cost | Actual cost | 输入 | 输出 | 任务说明 |
| --- | --- | --- | --- | --- | --- | --- | --- | --- | --- | --- | --- | --- | --- | --- | --- | --- | --- |
| 94 | 1.4 | **项目控制过程** |  | 247d | 2018-09-29 08:00 A | 2019-01-12 09:00 |  | 50% | 123.5d |  | 53.3h | 13.3h | 3,997.5 | 997.5 |  |  |  |
| 95 | 1.4.1 | 第一次正式会议 | manual | 1h | 2018-09-29 08:00 A | 2018-09-29 09:00 A | 6 | 100% |  | 黄浩峰; 李俊; 吴荣欣; 夏昌灏; 叶忠杰 | 5h | 5h | 375 | 375 | 全组讨论 | 第一次会议记录 | 项目小组第一次进行正式会议 |
| 96 | 1.4.2 | 第二次正式会议 | manual | 1h | 2018-10-06 08:00 A | 2018-10-06 09:00 A | 95 | 100% |  | 李俊; 黄浩峰; 夏昌灏; 吴荣欣; 叶忠杰 | 1h | 1h | 75 | 75 | 全组讨论 | 第二次会议记录 | 项目小组第一次进行正式会议 |
| 97 | 1.4.3 | 第三次正式会议 | manual | 1h | 2018-10-13 08:00 A | 2018-10-13 09:00 A | 96 | 100% |  | 黄浩峰; 李俊; 吴荣欣; 夏昌灏; 叶忠杰 | 1h | 1h | 75 | 75 | 人员讨论 | 第三次会议记录 | 项目小组第三次进行正式会议 |
| 98 | 1.4.4 | 第四次正式会议 | manual | 1h | 2018-10-20 08:00 A | 2018-10-20 09:00 A | 97 | 100% |  | 李俊; 黄浩峰; 吴荣欣; 夏昌灏; 叶忠杰 | 1h | 1h | 75 | 75 | 全组讨论 | 第四次会议记录 | 项目小组第四次进行正式会议 |
| 99 | 1.4.5 | 第五次会议记录 | manual | 1h | 2018-10-27 08:00 A | 2018-10-27 09:00 A | 98 | 100% |  | 黄浩峰; 李俊; 吴荣欣; 夏昌灏; 叶忠杰 | 2.5h | 2.5h | 187.5 | 187.5 | 全组讨论 | 第五次会议记录 | 项目小组第五次进行正式会议 |
| 100 | 1.4.6 | 第六次正式会议 | manual | 1h | 2018-11-03 08:00 A | 2018-11-03 09:00 A | 99 | 100% |  | 黄浩峰; 李俊; 吴荣欣; 叶忠杰; 夏昌灏 | 1h | 1h | 75 | 75 | 全组讨论 | 第六次会议记录 | 项目小组第六次进行正式会议 |
| 101 | 1.4.7 | 第七次正式会议 | manual | 1h | 2018-11-10 08:00 A | 2018-11-10 09:00 A | 100 | 100% |  | 黄浩峰; 李俊; 吴荣欣; 叶忠杰; 夏昌灏 | 0.8h | 0.8h | 60 | 60 | 全组讨论 | 第七次会议记录 | 项目小组第七次进行正式会议 |
| 102 | 1.4.8 | 第八次正式会议 | manual | 1h | 2018-11-17 08:00 A | 2018-11-17 09:00 A | 101 | 100% |  | 黄浩峰; 李俊; 吴荣欣; 叶忠杰; 夏昌灏 | 1h | 1h | 75 | 75 | 全组讨论 | 第八次会议记录 | 项目小组第八次进行正式会议 |
| 103 | 1.4.9 | 第九次正式会议 | manual | 1h | 2018-11-17 19:00 | 2018-11-17 20:00 | 102 |  |  | 黄浩峰; 李俊; 吴荣欣; 夏昌灏; 叶忠杰 | 5h |  | 375 |  | 全组讨论 | 第九次会议记录 | 项目小组第九次进行正式会议 |
| 104 | 1.4.10 | 第十次正式会议 | manual | 1h | 2018-11-24 08:00 | 2018-11-24 09:00 | 103 |  |  | 黄浩峰; 李俊; 吴荣欣; 夏昌灏; 叶忠杰 | 5h |  | 375 |  | 全组讨论 | 第十次会议记录 | 项目小组第十次进行正式会议 |
| 105 | 1.4.11 | 第十一次正式会议 | manual | 1h | 2018-12-01 08:00 | 2018-12-01 09:00 | 104 |  |  | 黄浩峰; 李俊; 吴荣欣; 夏昌灏; 叶忠杰 | 5h |  | 375 |  | 全组讨论 | 第十一次会议记录 | 项目小组第十一次进行正式会议 |
| 106 | 1.4.12 | 第十二次正式会议 | manual | 1h | 2018-12-08 08:00 | 2018-12-08 09:00 | 105 |  |  | 黄浩峰; 李俊; 吴荣欣; 夏昌灏; 叶忠杰 | 5h |  | 375 |  | 全组讨论 | 第十二次会议记录 | 项目小组第十二次进行正式会议 |
| 107 | 1.4.13 | 第十三次正式会议 | manual | 1h | 2018-12-08 19:00 | 2018-12-08 20:00 | 106 |  |  | 黄浩峰; 李俊; 吴荣欣; 夏昌灏; 叶忠杰 | 5h |  | 375 |  | 全组讨论 | 第十三次会议记录 | 项目小组第十三次进行正式会议 |
| 108 | 1.4.14 | 第十四次正式会议 | manual | 1h | 2018-12-08 20:00 | 2018-12-08 21:00 | 107 |  |  | 黄浩峰; 李俊; 吴荣欣; 夏昌灏; 叶忠杰 | 5h |  | 375 |  | 小组讨论 | 第十四次会议记录 | 项目小组第十四次进行正式会议 |
| 109 | 1.4.15 | 第十五次正式会议 | manual | 1h | 2018-12-09 19:00 | 2018-12-09 20:00 | 108 |  |  | 黄浩峰; 李俊; 吴荣欣; 夏昌灏; 叶忠杰 | 5h |  | 375 |  | 全组讨论 | 第十五次会议记录 | 项目小组第十五次进行正式会议 |
| 110 | 1.4.16 | 第十六次正式会议 | manual | 1h | 2019-01-12 08:00 | 2019-01-12 09:00 | 109 |  |  | 黄浩峰; 李俊; 吴荣欣; 夏昌灏; 叶忠杰 | 5h |  | 375 |  | 全组讨论 | 第十六次会议记录 | 项目小组第十六次进行正式会议 |
| 111 | 1.5 | **项目收尾--评审** |  | 10h | 2019-01-20 08:00 | 2019-01-20 18:00 | 93 |  |  |  | 40h |  | 3,000 |  |  |  |  |
| 112 | 1.5.1 | 项目总结报告 | milestone, manual | 5h | 2019-01-16 09:00 | 2019-01-16 14:00 | 93 |  |  | 李俊; 黄浩峰; 吴荣欣; 夏昌灏; 叶忠杰 | 25h |  | 1,875 |  | 对本项目进行总结 | 项目总结报告 | 整个项目的总结 |
| 113 | 1.5.2 | 散伙饭 | manual | 3h | 2019-01-21 08:00 | 2019-01-21 11:00 |  |  |  | 黄浩峰; 李俊; 吴荣欣; 夏昌灏; 叶忠杰 | 15h |  | 1,125 |  |  |  |  |
